Schedule from MS Project, 2023-01-29 to 2023-06-17.

## Calendars

- Standard: Mon-Sun 08:00-16:00.

## Resources

| Resource |
| --- |
| Gabriel Fonseca (Frontend) |
| Miguel Fernandes (Fullstack) |
| Pedro Moita (Frontend) |
| Marcos Leitão (Backend) |
| Rafael Ribeiro (Backend) |

## Schedule

| ID | WBS | Task | Type | Duration | Start | Finish | Predecessors | Total slack | Free slack | Resources | Work |
| --- | --- | --- | --- | --- | --- | --- | --- | --- | --- | --- | --- |
| 1 | 1 | **Projeto Suportar a Comunidade Local** |  | 140d | 2023-01-29 | 2023-06-17 |  | 0d |  |  | 3736h |
| 2 | 1.1 | **1º Sprint** |  | 3d | 2023-01-29 | 2023-01-31 |  | 0d |  |  | 120h |
| 3 | 1.1.1 | RNF-6: Preparação do Trabalho em Grupo |  | 1d | 2023-01-29 | 2023-01-29 |  | 2d |  | Marcos Leitão (Backend) | 8h |
| 4 | 1.1.2 | **Árvore do Projeto** |  | 1d | 2023-01-29 | 2023-01-29 |  | 0d |  |  | 32h |
| 5 | 1.1.2.1 | Preparação do FrontEnd (Client) |  | 1d | 2023-01-29 | 2023-01-29 |  | 0d |  | Pedro Moita (Frontend); Gabriel Fonseca (Frontend) | 16h |
| 6 | 1.1.2.2 | Preparação do Backend (Server) |  | 1d | 2023-01-29 | 2023-01-29 |  | 0d |  | Rafael Ribeiro (Backend); Miguel Fernandes (Fullstack) | 16h |
| 7 | 1.1.3 | Integração da Base de Dados Mysql |  | 2d | 2023-01-30 | 2023-01-31 | 4 | 0d |  | Gabriel Fonseca (Frontend); Marcos Leitão (Backend); Miguel Fernandes (Fullstack); Pedro Moita (Frontend); Rafael Ribeiro (Backend) | 80h |
| 8 | 1.2 | Ponto de situação 1ºSprint | milestone | 0d | 2023-01-31 | 2023-01-31 | 2 | 137d |  |  |  |
| 9 | 1.3 | **2º Sprint** |  | 28d | 2023-02-01 | 2023-02-28 | 2 | 0d |  |  | 824h |
| 10 | 1.3.1 | Interface Web Inicial |  | 8d | 2023-02-01 | 2023-02-08 |  | 20d |  | Pedro Moita (Frontend) | 64h |
| 11 | 1.3.2 | **Utilizadores** |  | 8d | 2023-02-01 | 2023-02-08 |  | 0d |  |  | 128h |
| 12 | 1.3.2.1 | **RF-05 & RNF-10: Criação de uma conta no sistema (Amazon Cognito)** |  | 3d | 2023-02-01 | 2023-02-03 |  | 0d |  |  | 48h |
| 13 | 1.3.2.1.1 | Implementação da Tabela User e criação AWS Cognito Account |  | 1d | 2023-02-01 | 2023-02-01 |  | 0d |  | Rafael Ribeiro (Backend); Marcos Leitão (Backend) | 16h |
| 14 | 1.3.2.1.2 | Implementação de mecanismo de Autenticação e autorização (Auth0) |  | 2d | 2023-02-02 | 2023-02-03 | 13 | 0d |  | Marcos Leitão (Backend); Rafael Ribeiro (Backend) | 32h |
| 15 | 1.3.2.2 | **RF-06 & RNF-10: Fazer login no sistema (Amazon Cognito);** |  | 4d | 2023-02-04 | 2023-02-07 | 12 | 0d |  |  | 64h |
| 16 | 1.3.2.2.1 | Fazer separação de tipos de conta |  | 2d | 2023-02-04 | 2023-02-05 |  | 0d |  | Marcos Leitão (Backend); Rafael Ribeiro (Backend) | 32h |
| 17 | 1.3.2.2.2 | Implementação da sessão de um utilizador |  | 2d | 2023-02-06 | 2023-02-07 | 16 | 0d |  | Marcos Leitão (Backend); Rafael Ribeiro (Backend) | 32h |
| 18 | 1.3.2.3 | API (User Requests) |  | 1d | 2023-02-08 | 2023-02-08 | 15 | 0d |  | Marcos Leitão (Backend); Rafael Ribeiro (Backend) | 16h |
| 19 | 1.3.3 | **Produtos** |  | 6d | 2023-02-01 | 2023-02-06 |  | 6d |  |  | 88h |
| 20 | 1.3.3.1 | Implementação de Tabela de Produtos, Categorias e Subcategorias |  | 5d | 2023-02-01 | 2023-02-05 |  | 6d | 0d | Miguel Fernandes (Fullstack) | 40h |
| 21 | 1.3.3.2 | API (Produto, Categoria e Subcategoria Requests) |  | 1d | 2023-02-06 | 2023-02-06 | 20 | 6d |  | Miguel Fernandes (Fullstack) | 8h |
| 22 | 1.3.3.3 | Implementação das Páginas Produtos |  | 5d | 2023-02-01 | 2023-02-05 |  | 7d |  | Gabriel Fonseca (Frontend) | 40h |
| 23 | 1.3.4 | **Aministrador** |  | 4d | 2023-02-09 | 2023-02-12 | 11 | 16d |  |  | 32h |
| 24 | 1.3.4.1 | RF-28: Desativação e reativação de qualquer conta de utilizador no sistema; |  | 2d | 2023-02-09 | 2023-02-10 |  | 16d | 0d | Miguel Fernandes (Fullstack) | 16h |
| 25 | 1.3.4.2 | Implementação da página Admin |  | 2d | 2023-02-11 | 2023-02-12 | 24 | 16d |  | Miguel Fernandes (Fullstack) | 16h |

Notes:
- 3: Orientação das Task com jira ou Azure / Preparação do repositório Git, WorkingGroup
- 7: Implementação da base de dados no projeto. / Instalar Ferramentas Necessárias (Dbeaver, PostMan)
- 10: Criação de páginas: / - Página Inicial / - Página de Login / - Página para Criar conta / - Outras páginas que possam ser relevantes para uma apresentação inicial.
- 12: Implementação da Tabela User e criação AWS Cognito Account / Implementação de mecanismo de Autenticação e autorização (Auth0) / Criação de conta no sistema tanto de: / - Consumidor / - Fornecedor / - Adminstrador
- 15: Garantir o mecanismo de Autenticação e autorização (Auth0)
- 18: Desenvolvimento ou continuação do desenvolvimento da API / - Users request's / - Especificação com OpenAPI, Swagger
- 20: Além da criação de cada tabela, implementação da relação entre tabela de Produtos, Categorias & Subcategorias
- 21: Desenvolvimento ou continuação do desenvolvimento da API / - Produtos request's / - Categoria Produto request's / - Subcategoria Produto request's / - Especificação com OpenAPI, Swagger
- 22: Depende da existência de produtos e sua API, contudo a interface/protótipo pode ser desenvolvida independentemente.

| ID | WBS | Task | Type | Duration | Start | Finish | Predecessors | Total slack | Free slack | Resources | Work |
| --- | --- | --- | --- | --- | --- | --- | --- | --- | --- | --- | --- |
| 26 | 1.3.5 | **Consumidor** |  | 4d | 2023-02-09 | 2023-02-12 | 11 | 2d |  |  | 32h |
| 27 | 1.3.5.1 | Implementação da Tabela de Consumidor |  | 1d | 2023-02-09 | 2023-02-09 |  | 2d | 0d | Rafael Ribeiro (Backend) | 8h |
| 28 | 1.3.5.2 | API (Consumer Request) |  | 1d | 2023-02-10 | 2023-02-10 | 27 | 2d | 0d | Rafael Ribeiro (Backend) | 8h |
| 29 | 1.3.5.3 | Implementação de página de Consumidor |  | 2d | 2023-02-11 | 2023-02-12 | 28 | 2d |  | Gabriel Fonseca (Frontend) | 16h |
| 30 | 1.3.6 | **Fornecedores** |  | 4d | 2023-02-09 | 2023-02-12 | 11 | 0d |  |  | 32h |
| 31 | 1.3.6.1 | Implementação da Tabela de Fornecedores |  | 1d | 2023-02-09 | 2023-02-09 |  | 0d |  | Marcos Leitão (Backend) | 8h |
| 32 | 1.3.6.2 | API (Fornecedor Request) |  | 1d | 2023-02-10 | 2023-02-10 | 31 | 0d |  | Marcos Leitão (Backend) | 8h |
| 33 | 1.3.6.3 | Implementação das Páginas Fornecedores |  | 2d | 2023-02-11 | 2023-02-12 | 32 | 0d |  | Pedro Moita (Frontend) | 16h |
| 34 | 1.3.7 | RF-19: Fornecedores criam produtos |  | 2d | 2023-02-13 | 2023-02-14 | 30, 19 | 0d |  | Marcos Leitão (Backend) | 16h |
| 35 | 1.3.8 | **Interação do Utilizador com produtos** |  | 7d | 2023-02-15 | 2023-02-21 | 26, 34 | 0d |  |  | 152h |
| 36 | 1.3.8.1 | RF-01: Navegação e Pesquisa de produtos e pelas hierarquias |  | 3d | 2023-02-15 | 2023-02-17 |  | 2d | 0d | Marcos Leitão (Backend) | 24h |
| 37 | 1.3.8.2 | RF-02: Visualização de produtos e seus fornecedores; |  | 2d | 2023-02-15 | 2023-02-16 |  | 5d |  | Gabriel Fonseca (Frontend) | 16h |
| 38 | 1.3.8.3 | RF-03: Pesquisa de produtos através dos campos comuns a todos os produtos; |  | 2d | 2023-02-18 | 2023-02-19 | 36 | 2d |  | Marcos Leitão (Backend) | 16h |
| 39 | 1.3.8.4 | RF-04: Colocação, consulta, e remoção de produtos num cesto de compras; |  | 2d | 2023-02-15 | 2023-02-16 |  | 5d |  | Rafael Ribeiro (Backend) | 16h |
| 40 | 1.3.8.5 | RF-10: Comparação de dois produtos, com as diferenças em destaque |  | 3d | 2023-02-15 | 2023-02-17 |  | 4d |  | Miguel Fernandes (Fullstack) | 24h |
| 41 | 1.3.8.6 | User experience e user interface |  | 7d | 2023-02-15 | 2023-02-21 |  | 0d |  | Pedro Moita (Frontend) | 56h |
| 42 | 1.3.9 | RNF-2: Especificar requisitos escalabilidade |  | 2d | 2023-02-22 | 2023-02-23 | 35 | 0d |  | Marcos Leitão (Backend); Miguel Fernandes (Fullstack) | 32h |
| 43 | 1.3.10 | RFN-3: Especificar requisitos segurança |  | 2d | 2023-02-24 | 2023-02-25 | 42 | 0d |  | Marcos Leitão (Backend); Miguel Fernandes (Fullstack) | 32h |
| 44 | 1.3.11 | RNF-4: Especificar requisitos tolerância a faltas |  | 2d | 2023-02-26 | 2023-02-27 | 43 | 0d |  | Marcos Leitão (Backend); Miguel Fernandes (Fullstack) | 32h |
| 45 | 1.3.12 | RFN-5: Design da arquitetura distribuída |  | 1d | 2023-02-28 | 2023-02-28 | 44 | 0d |  | Marcos Leitão (Backend); Miguel Fernandes (Fullstack) | 16h |
| 46 | 1.3.13 | Testes na Aplicação Fase2 |  | 7d | 2023-02-22 | 2023-02-28 | 35 | 0d |  | Gabriel Fonseca (Frontend); Pedro Moita (Frontend); Rafael Ribeiro (Backend) | 168h |
| 47 | 1.4 | Ponto de situação 2ºSprint | milestone | 0d | 2023-02-28 | 2023-02-28 | 9 | 109d |  |  |  |
| 48 | 1.5 | **3º Sprint** |  | 31d | 2023-03-01 | 2023-03-31 | 9 | 0d |  |  | 832h |
| 49 | 1.5.1 | Serviço externo Mapas para distância |  | 2d | 2023-03-01 | 2023-03-02 |  | 4d | 0d | Marcos Leitão (Backend) | 16h |

Notes:
- 28: Desenvolvimento ou continuação do desenvolvimento da API / - Consumidor request's / - Especificação com OpenAPI, Swagger
- 29: Depende da existência do consumidor e sua API, contudo a interface/protótipo pode ser desenvolvida independentemente.
- 32: Desenvolvimento ou continuação do desenvolvimento da API / - Fornecedor request's / - Especificação com OpenAPI, Swagger
- 33: Depende da existência de fornecedor e sua API, contudo a interface/protótipo pode ser desenvolvida independentemente.
- 34: 21,32
- 41: Criar a user interface e a user expirience associada a interação do utilizador com produtos
- 42: O sistema deve ter uma capacidade ajustável para atendimento de pedidos. Pode ser horizontal através da inclusão de mais nós e/ou vertical através de adicionar mais recursos aos nós existentes. A escalabilidade horizontal deve contar com balanceamento de carga.
- 43: Canais Seguros: Obtenção de um certificado. / Configuração de firewall: O sistema computacional e as redes devem estar cobertas por políticas de segurança que fazem uso dos mecanismos de proteção adequados de modo a impedir o acesso não-autorizado a recursos e dados e também impedir a disrupção do serviço
- 44: O sistema deve tolerar a falha de qualquer dos seus componentes, através de principalmente oferecer redundância ativa.
- 45: Aplicação do conceito em relação aos load balancers / Aplicação do conceito em relação aos web servers / Aplicação do conceito em relação às bases de dados
- 46: Inclui tratamento de erros e fix bugs

| ID | WBS | Task | Duration | Start | Finish | Predecessors | Total slack | Free slack | Resources | Work |
| --- | --- | --- | --- | --- | --- | --- | --- | --- | --- | --- |
| 50 | 1.5.2 | **RF-07: Conta de Consumidor e Adminstrador** | 2d | 2023-03-01 | 2023-03-02 |  | 0d |  |  | 32h |
| 51 | 1.5.2.1 | Edição dos dados e remoção da sua conta no sistema | 2d | 2023-03-01 | 2023-03-02 |  | 0d |  | Miguel Fernandes (Fullstack) | 16h |
| 52 | 1.5.2.2 | Implementação da UI da edição dos dados e remoção da sua conta no sistema | 2d | 2023-03-01 | 2023-03-02 |  | 0d |  | Pedro Moita (Frontend) | 16h |
| 53 | 1.5.3 | **RF-07: Conta de Fornecedor** | 2d | 2023-03-01 | 2023-03-02 |  | 0d |  |  | 32h |
| 54 | 1.5.3.1 | Edição dos dados e remoção da sua conta no sistema | 2d | 2023-03-01 | 2023-03-02 |  | 0d |  | Rafael Ribeiro (Backend) | 16h |
| 55 | 1.5.3.2 | Implementação da UI da edição dos dados e remoção da sua conta no sistema | 2d | 2023-03-01 | 2023-03-02 |  | 0d |  | Gabriel Fonseca (Frontend) | 16h |
| 56 | 1.5.4 | **Funcionalidades de Fornecedor - Transporte** | 3d | 2023-03-03 | 2023-03-05 | 49 | 4d |  |  | 40h |
| 57 | 1.5.4.1 | Implementação Tabela de Transportes | 1d | 2023-03-03 | 2023-03-03 |  | 4d | 0d | Marcos Leitão (Backend) | 8h |
| 58 | 1.5.4.2 | RF-21: Criação, edição, e remoção de veículo de transporte de produtos | 1d | 2023-03-04 | 2023-03-04 | 57 | 4d | 0d | Marcos Leitão (Backend) | 8h |
| 59 | 1.5.4.3 | API (Transporte Request) | 1d | 2023-03-05 | 2023-03-05 | 58 | 4d |  | Marcos Leitão (Backend) | 8h |
| 60 | 1.5.4.4 | Visualização dos veiculos de transporte | 2d | 2023-03-03 | 2023-03-04 |  | 5d |  | Gabriel Fonseca (Frontend) | 16h |
| 61 | 1.5.5 | **Funcionalidades de Fornecedor - Unidade de Produção** | 7d | 2023-03-03 | 2023-03-09 | 50, 53 | 0d |  |  | 104h |
| 62 | 1.5.5.1 | RF-18: Criação, gestão, e remoção de unidade de produção | 2d | 2023-03-03 | 2023-03-04 |  | 3d | 0d | Rafael Ribeiro (Backend) | 16h |
| 63 | 1.5.5.2 | RF-19: Criação, gestão, e remoção de produto, e ligação a unidade de produção | 2d | 2023-03-03 | 2023-03-04 |  | 5d |  | Miguel Fernandes (Fullstack) | 16h |
| 64 | 1.5.5.3 | API (Unidade de produção Request) | 2d | 2023-03-05 | 2023-03-06 | 62 | 3d |  | Rafael Ribeiro (Backend) | 16h |
| 65 | 1.5.5.4 | RF-20: Visualização de unidade de produção e dos seus produtos | 2d | 2023-03-03 | 2023-03-04 |  | 0d |  | Pedro Moita (Frontend) | 16h |
| 66 | 1.5.5.5 | Implementação da UI funcionalidades de Fornecedor | 5d | 2023-03-05 | 2023-03-09 | 65 | 0d |  | Pedro Moita (Frontend) | 40h |
| 67 | 1.5.6 | RF-08: Pesquisa de produtos através dos campos específicos das categorias | 2d | 2023-03-10 | 2023-03-11 | 61, 56 | 0d |  | Marcos Leitão (Backend) | 16h |
| 68 | 1.5.7 | **Funcionalidade encomendar** | 6d | 2023-03-12 | 2023-03-17 | 49, 67 | 0d |  |  | 144h |
| 69 | 1.5.7.1 | Implementação da Tabela das Encomendas | 2d | 2023-03-12 | 2023-03-13 |  | 0d |  | Miguel Fernandes (Fullstack) | 16h |
| 70 | 1.5.7.2 | RF-11: Encomenda dos produtos no cesto de compras | 2d | 2023-03-14 | 2023-03-15 | 69 | 0d |  | Rafael Ribeiro (Backend) | 16h |
| 71 | 1.5.7.3 | RF-12: Pagamento de encomenda recorrendo a um sistema externo | 3d | 2023-03-14 | 2023-03-16 | 69 | 1d |  | Marcos Leitão (Backend) | 24h |
| 72 | 1.5.7.4 | RF-13: Cancelamento de encomenda, desde que dentro de um dado prazo; | 2d | 2023-03-14 | 2023-03-15 | 69 | 2d |  | Miguel Fernandes (Fullstack) | 16h |
| 73 | 1.5.7.5 | API (Encomenda Request) | 2d | 2023-03-16 | 2023-03-17 | 70 | 0d |  | Rafael Ribeiro (Backend) | 16h |
| 74 | 1.5.7.6 | RF-09: Visualização do histórico de encomendas e seus detalhes | 2d | 2023-03-12 | 2023-03-13 |  | 4d |  | Gabriel Fonseca (Frontend) | 16h |
| 75 | 1.5.7.7 | Implementação da UI Funcionalide encomendar | 5d | 2023-03-12 | 2023-03-16 |  | 1d |  | Pedro Moita (Frontend) | 40h |

Notes:
- 59: Desenvolvimento ou continuação do desenvolvimento da API / - Transporte request's / - Especificação com OpenAPI, Swagger
- 64: Desenvolvimento ou continuação do desenvolvimento da API / - Unidade de produção request's / - Especificação com OpenAPI, Swagger
- 65: Depende da existência da unidade de produção e produtos e suas API's, contudo a interface/protótipo pode ser desenvolvida independentemente.
- 73: Desenvolvimento ou continuação do desenvolvimento da API / - Encomendas request's / - Especificação com OpenAPI, Swagger
- 74: Depende da existência de encomendas e suas API's, contudo a interface/protótipo pode ser desenvolvida independentemente.

| ID | WBS | Task | Type | Duration | Start | Finish | Predecessors | Total slack | Free slack | Resources | Work |
| --- | --- | --- | --- | --- | --- | --- | --- | --- | --- | --- | --- |
| 76 | 1.5.8 | **Interação de Fornecedor** |  | 4d | 2023-03-18 | 2023-03-21 | 68 | 0d |  |  | 48h |
| 77 | 1.5.8.1 | RF-23: Visualização de encomenda de consumidor; |  | 2d | 2023-03-18 | 2023-03-19 |  | 2d |  | Gabriel Fonseca (Frontend) | 16h |
| 78 | 1.5.8.2 | RF-24: Colocação de produto encomendado em veículo de transporte disponível; |  | 2d | 2023-03-18 | 2023-03-19 |  | 0d |  | Marcos Leitão (Backend) | 16h |
| 79 | 1.5.8.3 | Implementação da UI da interação de Fornecedor |  | 2d | 2023-03-20 | 2023-03-21 | 78 | 0d |  | Pedro Moita (Frontend) | 16h |
| 80 | 1.5.9 | RNF-7: Implementação da arquitetura distribuída (implementação de instâncias e |  | 4d | 2023-03-22 | 2023-03-25 | 76 | 0d |  | Marcos Leitão (Backend); Miguel Fernandes (Fullstack) | 64h |
| 81 | 1.5.10 | RFN-8: Configuração dos balanceadores de carga e mecanismos de escalabilidade |  | 3d | 2023-03-26 | 2023-03-28 | 80 | 0d |  | Marcos Leitão (Backend); Miguel Fernandes (Fullstack) | 48h |
| 82 | 1.5.11 | RFN-9: Configuração de mecanismos de tolerância a faltas e verificação de saúde |  | 3d | 2023-03-29 | 2023-03-31 | 81 | 0d |  | Marcos Leitão (Backend); Miguel Fernandes (Fullstack) | 48h |
| 83 | 1.5.12 | Testes na Aplicação Fase3 |  | 10d | 2023-03-22 | 2023-03-31 | 76 | 0d |  | Gabriel Fonseca (Frontend); Pedro Moita (Frontend); Rafael Ribeiro (Backend) | 240h |
| 84 | 1.6 | Ponto de situação 3ºSprint | milestone | 0d | 2023-03-31 | 2023-03-31 | 48 | 78d |  |  |  |
| 85 | 1.7 | **4º Sprint** |  | 30d | 2023-04-01 | 2023-04-30 | 48 | 0d |  |  | 944h |
| 86 | 1.7.1 | RFN-11: Canais seguros, DNS e configuração de firewall |  | 2d | 2023-04-01 | 2023-04-02 |  | 0d |  | Gabriel Fonseca (Frontend); Marcos Leitão (Backend); Miguel Fernandes (Fullstack); Pedro Moita (Frontend); Rafael Ribeiro (Backend) | 80h |
| 87 | 1.7.2 | RFN-12: Configurar uso de APIs externas |  | 2d | 2023-04-03 | 2023-04-04 | 86 | 0d |  | Gabriel Fonseca (Frontend); Marcos Leitão (Backend); Miguel Fernandes (Fullstack); Pedro Moita (Frontend); Rafael Ribeiro (Backend) | 80h |
| 88 | 1.7.3 | RFN-13: Gestão de credenciais e Ips |  | 2d | 2023-04-05 | 2023-04-06 | 87 | 0d |  | Gabriel Fonseca (Frontend); Marcos Leitão (Backend); Miguel Fernandes (Fullstack); Pedro Moita (Frontend); Rafael Ribeiro (Backend) | 80h |
| 89 | 1.7.4 | Testes com utilizadores |  | 7d | 2023-04-07 | 2023-04-13 | 88 | 0d |  | Gabriel Fonseca (Frontend); Marcos Leitão (Backend); Miguel Fernandes (Fullstack); Pedro Moita (Frontend); Rafael Ribeiro (Backend) | 280h |
| 90 | 1.7.5 | **Fix Issuses e Completar Tarefas** |  | 7d | 2023-04-01 | 2023-04-07 |  | 23d |  |  |  |
| 91 | 1.7.5.1 | Tarefas Pendentes |  | 7d | 2023-04-01 | 2023-04-07 |  | 23d |  |  |  |
| 92 | 1.7.5.2 | Issues |  | 7d | 2023-04-01 | 2023-04-07 |  | 23d |  |  |  |
| 93 | 1.7.6 | **Funcionalidade de Notificações** |  | 8d | 2023-04-14 | 2023-04-21 | 89 | 0d |  |  | 80h |
| 94 | 1.7.6.1 | Implementação da UI das Notificações |  | 2d | 2023-04-14 | 2023-04-15 |  | 6d |  | Pedro Moita (Frontend) | 16h |
| 95 | 1.7.6.2 | RF-14: Notificação sobre a saída de produtos encomendados de um fornecedor; |  | 2d | 2023-04-14 | 2023-04-15 |  | 0d |  | Rafael Ribeiro (Backend) | 16h |
| 96 | 1.7.6.3 | RF-15: Notificação sobre a chegada iminente de encomenda; |  | 3d | 2023-04-16 | 2023-04-18 | 95 | 0d |  | Rafael Ribeiro (Backend) | 24h |
| 97 | 1.7.6.4 | RF-22: Notificação sobre encomenda de consumidor; |  | 3d | 2023-04-19 | 2023-04-21 | 96 | 0d |  | Rafael Ribeiro (Backend) | 24h |
| 98 | 1.7.7 | **Funcionalidade Registos** |  | 4d | 2023-04-22 | 2023-04-25 | 93 | 5d |  |  | 32h |
| 99 | 1.7.7.1 | RF-26: Registo de chegada iminente de encomenda a casa do consumidor; |  | 2d | 2023-04-22 | 2023-04-23 |  | 5d | 0d | Miguel Fernandes (Fullstack) | 16h |
| 100 | 1.7.7.2 | RF-25: Registo de saída de veículo de transporte com produtos encomendados; |  | 2d | 2023-04-24 | 2023-04-25 | 99 | 5d |  | Miguel Fernandes (Fullstack) | 16h |

Notes:
- 80: Implementação dos LB / Implementação dos servers / Implementação das bases de dados
- 82: Teste de tolerância a faltas nos LB / Teste de tolerância a faltas nos webservers / Teste de tolerância a faltas nas bases de dados
- 86: Uso de TLS com certificado assinado por uma Autoridade Certificadora (AC) / Nome de domínio registado e associado ao IP estático / Configurações de firewall
- 87: Preparar a utilização das mesma num ambiente de produção

| ID | WBS | Task | Type | Duration | Start | Finish | Predecessors | Total slack | Free slack | Resources | Work |
| --- | --- | --- | --- | --- | --- | --- | --- | --- | --- | --- | --- |
| 101 | 1.7.8 | **Funcionalidade de Consumidor** |  | 4d | 2023-04-14 | 2023-04-17 | 89 | 6d | 0d |  | 48h |
| 102 | 1.7.8.1 | Backend para gerar dados |  | 2d | 2023-04-14 | 2023-04-15 |  | 6d | 0d | Marcos Leitão (Backend) | 16h |
| 103 | 1.7.8.2 | RF-16: Visualização de relatório do impacto local das suas encomendas; |  | 2d | 2023-04-16 | 2023-04-17 | 102 | 6d |  | Gabriel Fonseca (Frontend) | 16h |
| 104 | 1.7.8.3 | RF-17: Exportação dos dados das encomendas para ficheiros JSON. |  | 2d | 2023-04-16 | 2023-04-17 | 102 | 6d |  | Marcos Leitão (Backend) | 16h |
| 105 | 1.7.9 | **Funcionalidade de Administrador** |  | 4d | 2023-04-22 | 2023-04-25 | 93 | 0d |  |  | 32h |
| 106 | 1.7.9.1 | Backend para gerar dados |  | 2d | 2023-04-22 | 2023-04-23 |  | 0d |  | Rafael Ribeiro (Backend) | 16h |
| 107 | 1.7.9.2 | RF-29: Visualização de relatório do impacto local das vendas de produtos; |  | 2d | 2023-04-24 | 2023-04-25 | 106 | 0d |  | Pedro Moita (Frontend) | 16h |
| 108 | 1.7.10 | **Funcionalidade de Fornecedor** |  | 2d | 2023-04-18 | 2023-04-19 | 101 | 6d |  |  | 32h |
| 109 | 1.7.10.1 | Backend para gerar dados |  | 2d | 2023-04-18 | 2023-04-19 |  | 6d |  | Marcos Leitão (Backend) | 16h |
| 110 | 1.7.10.2 | RF-27: Visualização de relatório do impacto local das vendas dos seus produtos |  | 2d | 2023-04-18 | 2023-04-19 |  | 6d |  | Pedro Moita (Frontend) | 16h |
| 111 | 1.7.11 | Testes na Aplicação Fase4 |  | 5d | 2023-04-26 | 2023-04-30 | 93, 105, 108 | 0d |  | Gabriel Fonseca (Frontend); Marcos Leitão (Backend); Miguel Fernandes (Fullstack); Pedro Moita (Frontend); Rafael Ribeiro (Backend) | 200h |
| 112 | 1.8 | Ponto de situação 4ºSprint | milestone | 0d | 2023-04-30 | 2023-04-30 | 85 | 48d |  |  |  |
| 113 | 1.9 | **5º Sprint** |  | 31d | 2023-05-01 | 2023-05-31 | 85 | 0d |  |  | 736h |
| 114 | 1.9.1 | **Fix Issuses e Completar Tarefas** |  | 10d | 2023-05-01 | 2023-05-10 |  | 0d |  |  |  |
| 115 | 1.9.1.1 | Tarefas Pendentes |  | 10d | 2023-05-01 | 2023-05-10 |  | 0d |  |  |  |
| 116 | 1.9.1.2 | Issues |  | 10d | 2023-05-01 | 2023-05-10 |  | 0d |  |  |  |
| 117 | 1.9.2 | **Funcionalidades Extras** |  | 6d | 2023-05-01 | 2023-05-06 |  | 4d |  |  | 88h |
| 118 | 1.9.2.1 | Chat Bot; |  | 6d | 2023-05-01 | 2023-05-06 |  | 4d |  | Marcos Leitão (Backend) | 48h |
| 119 | 1.9.2.2 | Lista de Favoritos; |  | 5d | 2023-05-01 | 2023-05-05 |  | 5d |  | Rafael Ribeiro (Backend) | 40h |
| 120 | 1.9.3 | **Requisitos Não funcionais** |  | 10d | 2023-05-11 | 2023-05-20 | 117, 114 | 0d |  |  | 208h |
| 121 | 1.9.3.1 | RFN-14: Automação e scripts para construção e lançamento da aplicação |  | 2d | 2023-05-11 | 2023-05-12 |  | 0d |  | Marcos Leitão (Backend); Miguel Fernandes (Fullstack); Gabriel Fonseca (Frontend); Pedro Moita (Frontend); Rafael Ribeiro (Backend) | 80h |
| 122 | 1.9.3.2 | RFN-15: Inclusão de testes unitários integrados ao processo de construção da aplicação |  | 2d | 2023-05-13 | 2023-05-14 | 121 | 0d |  | Gabriel Fonseca (Frontend); Marcos Leitão (Backend); Miguel Fernandes (Fullstack); Pedro Moita (Frontend); Rafael Ribeiro (Backend) | 80h |
| 123 | 1.9.3.3 | RFN-16: Testes de aceitação com a API |  | 2d | 2023-05-15 | 2023-05-16 | 122 | 0d |  | Miguel Fernandes (Fullstack) | 16h |
| 124 | 1.9.3.4 | RFN-17: Testes de carga |  | 2d | 2023-05-17 | 2023-05-18 | 123 | 0d |  | Rafael Ribeiro (Backend) | 16h |
| 125 | 1.9.3.5 | RFN-18: Testes de vulnerabilidades |  | 2d | 2023-05-19 | 2023-05-20 | 124 | 0d |  | Marcos Leitão (Backend) | 16h |
| 126 | 1.9.4 | Testes com utilizadores. |  | 11d | 2023-05-21 | 2023-05-31 | 120 | 0d |  | Gabriel Fonseca (Frontend); Marcos Leitão (Backend); Miguel Fernandes (Fullstack); Pedro Moita (Frontend); Rafael Ribeiro (Backend) | 440h |
| 127 | 1.10 | Ponto de situação 5ºSprint | milestone | 0d | 2023-05-31 | 2023-05-31 | 113 | 17d |  |  |  |

Notes:
- 103: Depende da existência da backend para gerar dados contudo a interface/protótipo pode ser desenvolvida independentemente.
- 107: Depende da existência da backend para gerar dados contudo a interface/protótipo pode ser desenvolvida independentemente.
- 110: Depende da existência da backend para gerar dados contudo a interface/protótipo pode ser desenvolvida independentemente.

| ID | WBS | Task | Type | Duration | Start | Finish | Predecessors | Total slack | Resources | Work |
| --- | --- | --- | --- | --- | --- | --- | --- | --- | --- | --- |
| 128 | 1.11 | **6º Sprint** |  | 17d | 2023-06-01 | 2023-06-17 | 113 | 0d |  | 280h |
| 129 | 1.11.1 | **Fix Issuses e Completar Tarefas** |  | 10d | 2023-06-01 | 2023-06-10 |  | 0d |  |  |
| 130 | 1.11.1.1 | Tarefas Pendentes |  | 10d | 2023-06-01 | 2023-06-10 |  | 0d |  |  |
| 131 | 1.11.1.2 | Issues |  | 10d | 2023-06-01 | 2023-06-10 |  | 0d |  |  |
| 132 | 1.11.2 | Testes Finais |  | 7d | 2023-06-11 | 2023-06-17 | 129 | 0d | Gabriel Fonseca (Frontend); Marcos Leitão (Backend); Miguel Fernandes (Fullstack); Pedro Moita (Frontend); Rafael Ribeiro (Backend) | 280h |
| 133 | 1.12 | Ponto de situação 6ºSprint | milestone | 0d | 2023-06-17 | 2023-06-17 | 128 | 0d |  |  |
